Schedule from GanttProject, 2013-02-04 to 2013-05-17.

## Calendars

- Project calendar: Mon-Fri working; Sat-Sun off.

## Resources

| Resource |
| --- |
| Nic |
| Amy |
| Kevin |
| Matthias |
| Jack |

## Schedule

| ID | WBS | Task | Duration | Start | Finish | Resources |
| --- | --- | --- | --- | --- | --- | --- |
| 1 | 1 | Amy's presentation | 1d | 2013-02-04 | 2013-02-04 |  |
| 2 | 2 | **PI of N2** | 11d | 2013-02-15 | 2013-03-01 |  |
| 3 | 2.1 | optimise laser | 2d | 2013-02-15 | 2013-02-18 | Amy; Jack |
| 4 | 2.2 | optimise laser focussing | 4d | 2013-02-19 | 2013-02-22 | Amy |
| 5 | 2.3 | optimise electronics | 1d | 2013-02-25 | 2013-02-25 | Amy |
| 6 | 2.4 | Check literature: wave length and sat. intensities | 7d | 2013-02-15 | 2013-02-25 | Matthias |
| 7 | 2.5 | measure spectrum | 4d | 2013-02-26 | 2013-03-01 | Amy; Jack |
| 8 | 2.6 | new energy head | 11d | 2013-02-15 | 2013-03-01 | Nic |
| 9 | 3 | **Molecular beam line** | 18d | 2013-02-15 | 2013-03-12 |  |
| 10 | 3.1 | Check equipment | 1d | 2013-02-18 | 2013-02-18 |  |
| 11 | 3.2 | machine parts | 4d | 2013-02-15 | 2013-02-20 |  |
| 12 | 3.3 | Take beam line apart | 1d | 2013-02-18 | 2013-02-18 |  |
| 13 | 3.4 | Add secondary skimmer | 1d | 2013-02-21 | 2013-02-21 |  |
| 14 | 3.5 | Assemble and aligne beam line | 5d | 2013-02-22 | 2013-02-28 |  |
| 15 | 3.6 | Modify trap | 3d | 2013-02-26 | 2013-02-28 | Nic; Amy |
| 16 | 3.7 | Check/fix top window | 3d | 2013-02-26 | 2013-02-28 |  |
| 17 | 3.8 | Test beam line / trap set-up | 5d | 2013-03-01 | 2013-03-07 |  |
| 18 | 3.9 | bake vacuum system | 3d | 2013-03-08 | 2013-03-12 |  |
| 19 | 4 | **Loading N2 into trap** | 30d | 2013-03-04 | 2013-04-12 |  |
| 20 | 4.1 | Software | 7d | 2013-03-04 | 2013-03-12 |  |
| 21 | 4.2 | Fast and reliable crystal composition measurement | 13d | 2013-03-13 | 2013-03-29 |  |
| 22 | 4.3 | optimise loading process | 5d | 2013-04-01 | 2013-04-05 |  |
| 23 | 4.4 | Test N2 removal / optimise | 5d | 2013-04-08 | 2013-04-12 |  |
| 24 | 5 | **Dipole force interferometer** | 16d | 2013-02-15 | 2013-03-08 |  |
| 25 | 5.1 | Set up laser | 1d | 2013-02-15 | 2013-02-15 |  |
| 26 | 5.2 | test set-up for interferometer | 2d | 2013-02-19 | 2013-02-20 |  |
| 27 | 5.3 | check electronics for stabilisation | 4d | 2013-02-21 | 2013-02-26 |  |
| 28 | 5.4 | test and optimise interferometer | 8d | 2013-02-27 | 2013-03-08 |  |

| ID | WBS | Task | Duration | Start | Finish | Complete |
| --- | --- | --- | --- | --- | --- | --- |
| 29 | 6 | **State detection** | 55d | 2013-03-04 | 2013-05-17 |  |
| 30 | 6.1 | Establish experimental sequence | 1d | 2013-03-04 | 2013-03-04 |  |
| 31 | 6.2 | Electronics for state detection/programs | 20d | 2013-03-04 | 2013-03-29 | 3% |
| 32 | 6.3 | State detection measurment | 25d | 2013-04-15 | 2013-05-17 |  |
